# TT_ProjectSchedule

Schedule from MS Project, 2015-05-13 to 2015-08-26, A marks actual dates.
FPT

## Calendars

- Standard: Mon-Fri 08:00-12:00, 13:00-17:00; Sat-Sun off.

## Resources

| Resource |
| --- |
| DucHN |
| HaiDT |
| HoangNM |
| ThuyLM |
| LucPT |
| HieuTM |
| TEAM |
| DevTeam |
| DocTeam |
| TestTeam |

## Schedule

| ID | WBS | Task | Duration | Start | Finish | Predecessors | Complete | Resources | Work | Actual work |
| --- | --- | --- | --- | --- | --- | --- | --- | --- | --- | --- |
| 1 | 1 | **Fly Away Plus** | 76d | 2015-05-13 A | 2015-08-26 A |  | 100% |  | 1532h | 1532h |
| 2 | 1.1 | **Initiation** | 15d | 2015-05-13 A | 2015-06-02 A |  | 100% |  | 320h | 320h |
| 3 | 1.1.1 | **Form up** | 1d | 2015-05-13 A | 2015-05-13 A |  | 100% |  | 8h | 8h |
| 4 | 1.1.1.1 | Form up team roles | 0.5d | 2015-05-13 A | 2015-05-13 A |  | 100% | TEAM | 4h | 4h |
| 5 | 1.1.1.2 | Uniform idea meeting | 0.5d | 2015-05-13 A | 2015-05-13 A | 4 | 100% | TEAM | 4h | 4h |
| 6 | 1.1.2 | **Project Clarification** | 1.5d | 2015-05-13 A | 2015-05-14 A |  | 100% |  | 16h | 16h |
| 7 | 1.1.2.1 | Clarify project scope | 0.1d | 2015-05-14 A | 2015-05-14 A | 5 | 100% | TEAM | 0.8h | 0.8h |
| 8 | 1.1.2.2 | Clarify technical requirements | 0.1d | 2015-05-14 A | 2015-05-14 A | 7 | 100% | TEAM | 0.8h | 0.8h |
| 9 | 1.1.2.3 | Clarify rules in Team | 0.1d | 2015-05-14 A | 2015-05-14 A | 8 | 100% | TEAM | 0.8h | 0.8h |
| 10 | 1.1.2.4 | Clarify working environments | 0.1d | 2015-05-14 A | 2015-05-14 A | 9 | 100% | TEAM | 0.8h | 0.8h |
| 11 | 1.1.2.5 | Develop communications plan | 0.1d | 2015-05-14 A | 2015-05-14 A | 10 | 100% | DucHN | 0.8h | 0.8h |
| 12 | 1.1.2.6 | List project features | 0.5d | 2015-05-13 A | 2015-05-13 A |  | 100% | TEAM | 4h | 4h |
| 13 | 1.1.2.7 | Initiate Project structure | 0.5d | 2015-05-13 A | 2015-05-13 A | 12 | 100% | HaiDT | 4h | 4h |
| 14 | 1.1.2.8 | Create Coding conventions | 0.5d | 2015-05-14 A | 2015-05-14 A | 13 | 100% | HaiDT | 4h | 4h |
| 15 | 1.1.3 | **Environment** | 1.5d | 2015-05-14 A | 2015-05-15 A | 6 | 100% |  | 12h | 12h |
| 16 | 1.1.3.1 | Create guideline of installing and using environments | 0.5d | 2015-05-14 A | 2015-05-14 A | 12 | 100% | DucHN | 4h | 4h |
| 17 | 1.1.3.2 | Setup TortoiseGit | 1h | 2015-05-15 A | 2015-05-15 A | 16 | 100% | TEAM | 1h | 1h |
| 18 | 1.1.3.3 | Setup Visual Studio 2013 Ultimate | 3h | 2015-05-15 A | 2015-05-15 A | 17 | 100% | TEAM | 3h | 3h |
| 19 | 1.1.3.4 | Setup Microsoft SQL Server 2012 | 1h | 2015-05-15 A | 2015-05-15 A | 18 | 100% | TEAM | 1h | 1h |
| 20 | 1.1.3.5 | Training environments meeting | 3h | 2015-05-15 A | 2015-05-15 A | 19 | 100% | TEAM | 3h | 3h |
| 21 | 1.1.4 | **Technology research** | 9d | 2015-05-18 A | 2015-05-28 A | 15 | 100% |  | 96h | 96h |
| 22 | 1.1.4.1 | Research technologies to be used in project | 3d | 2015-05-18 A | 2015-05-20 A |  | 100% | HaiDT | 24h | 24h |
| 23 | 1.1.4.2 | Study .NET MVC5 | 4d | 2015-05-18 A | 2015-05-21 A |  | 100% | HoangNM | 32h | 32h |
| 24 | 1.1.4.3 | Study Bootstrap | 1d | 2015-05-22 A | 2015-05-22 A | 23 | 100% | HoangNM | 8h | 8h |
| 25 | 1.1.4.4 | Study Javascript, jQuery | 4d | 2015-05-25 A | 2015-05-28 A | 24 | 100% | HoangNM | 32h | 32h |

| ID | WBS | Task | Type | Duration | Start | Finish | Predecessors | Complete | Resources | Work | Actual work |
| --- | --- | --- | --- | --- | --- | --- | --- | --- | --- | --- | --- |
| 26 | 1.1.5 | **Project Introduction** |  | 5.5d | 2015-05-18 A | 2015-05-25 A | 15 | 100% |  | 44h | 44h |
| 27 | 1.1.5.1 | Create "Project Introduction" document |  | 3d | 2015-05-18 A | 2015-05-20 A |  | 100% | DocTeam | 24h | 24h |
| 28 | 1.1.5.2 | Peer review "Project Introduction" document |  | 0.5d | 2015-05-21 A | 2015-05-21 A | 27 | 100% | DucHN | 4h | 4h |
| 29 | 1.1.5.3 | Update "Project Introduction" document draft |  | 1d | 2015-05-21 A | 2015-05-22 A | 28 | 100% | DocTeam | 8h | 8h |
| 30 | 1.1.5.4 | Update "Project Introduction" based on instructor's comments |  | 1d | 2015-05-22 A | 2015-05-25 A | 29 | 100% | DocTeam | 8h | 8h |
| 31 | 1.1.5.5 | Summit Project Introduction | milestone | 0d | 2015-05-25 A | 2015-05-25 A | 30 | 100% |  |  |  |
| 32 | 1.1.6 | Kick-off meeting |  | 0.5d | 2015-05-25 A | 2015-05-25 A | 26 | 100% | TEAM | 4h | 4h |
| 33 | 1.1.7 | **Q&A sheet** |  | 1.5d | 2015-05-25 A | 2015-05-26 A | 26 | 100% |  | 12h | 12h |
| 34 | 1.1.7.1 | Create Q&A |  | 0.5d | 2015-05-25 A | 2015-05-25 A |  | 100% | LucPT | 4h | 4h |
| 35 | 1.1.7.2 | Update Q&A sheet |  | 0.5d | 2015-05-26 A | 2015-05-26 A | 34 | 100% | LucPT | 4h | 4h |
| 36 | 1.1.7.3 | Translate Q&A sheet |  | 0.5d | 2015-05-26 A | 2015-05-26 A | 35 | 100% | LucPT | 4h | 4h |
| 37 | 1.1.8 | **Project Plan** |  | 12d | 2015-05-18 A | 2015-06-02 A | 15 | 100% |  | 96h | 96h |
| 38 | 1.1.8.1 | Develop project definition |  | 2d | 2015-05-18 A | 2015-05-19 A |  | 100% | DucHN | 16h | 16h |
| 39 | 1.1.8.2 | Create Project plan document |  | 1d | 2015-05-20 A | 2015-05-20 A | 38 | 100% | DucHN | 8h | 8h |
| 40 | 1.1.8.3 | Create Work BreakDown Structure |  | 3d | 2015-05-21 A | 2015-05-25 A | 39 | 100% | DucHN | 24h | 24h |
| 41 | 1.1.8.4 | Create Project schedule document |  | 3d | 2015-05-26 A | 2015-05-28 A | 40 | 100% | DucHN | 24h | 24h |
| 42 | 1.1.8.5 | Create CM Plan document |  | 0.5d | 2015-05-29 A | 2015-05-29 A | 41 | 100% | DucHN | 4h | 4h |
| 43 | 1.1.8.6 | Review & get comment of Project Plan |  | 0.5d | 2015-05-29 A | 2015-05-29 A | 42 | 100% | DucHN | 4h | 4h |
| 44 | 1.1.8.7 | Develop Risk Register |  | 0.5d | 2015-06-01 A | 2015-06-01 A | 43 | 100% | HieuTM | 4h | 4h |
| 45 | 1.1.8.8 | Update Project Plan documents (Schedule, Project Plan in MS Word, CM Plan) |  | 1d | 2015-06-01 A | 2015-06-01 A | 43 | 100% | DucHN | 8h | 8h |
| 46 | 1.1.8.9 | Create PP Review check list |  | 0.5d | 2015-06-02 A | 2015-06-02 A | 45 | 100% | ThuyLM | 4h | 4h |
| 47 | 1.1.8.10 | Summit Project Plan Final version | milestone | 0d | 2015-06-02 A | 2015-06-02 A | 46FS+0.5d | 100% |  |  |  |
| 48 | 1.1.9 | **Requirement** |  | 4d | 2015-05-25 A | 2015-05-29 A | 26 | 100% |  | 32h | 32h |
| 49 | 1.1.9.1 | **User Requirement** |  | 2d | 2015-05-25 A | 2015-05-27 A |  | 100% |  | 16h | 16h |
| 50 | 1.1.9.1.1 | Develop brief "User Requirements Specification" document |  | 1d | 2015-05-25 A | 2015-05-26 A |  | 100% | DocTeam | 8h | 8h |
| 51 | 1.1.9.1.2 | Peer review brief "User Requirements Specification" document |  | 0.5d | 2015-05-26 A | 2015-05-26 A | 50 | 100% | DocTeam | 4h | 4h |
| 52 | 1.1.9.1.3 | Update brief "User Requirements Specification" document |  | 0.5d | 2015-05-27 A | 2015-05-27 A | 51 | 100% | DocTeam | 4h | 4h |

| ID | WBS | Task | Type | Duration | Start | Finish | Predecessors | Complete | Resources | Work | Actual work |
| --- | --- | --- | --- | --- | --- | --- | --- | --- | --- | --- | --- |
| 53 | 1.1.9.2 | **Mock-up screens** |  | 2d | 2015-05-27 A | 2015-05-29 A | 49 | 100% |  | 16h | 16h |
| 54 | 1.1.9.2.1 | Collect business requirements and processes |  | 0.5d | 2015-05-27 A | 2015-05-27 A |  | 100% | TEAM | 4h | 4h |
| 55 | 1.1.9.2.2 | Develop main features' mockup screens |  | 1d | 2015-05-28 A | 2015-05-28 A | 54 | 100% | DevTeam | 8h | 8h |
| 56 | 1.1.9.2.3 | Review and edit screen main features' mockup screens |  | 0.5d | 2015-05-29 A | 2015-05-29 A | 55 | 100% | DevTeam | 4h | 4h |
| 57 | 1.1.9.3 | Complete main features' mockup screens | milestone | 0d | 2015-05-29 A | 2015-05-29 A | 56 | 100% |  |  |  |
| 58 | 1.2 | **Solution** |  | 25d | 2015-06-03 A | 2015-07-07 A | 2 | 100% |  | 408h | 408h |
| 59 | 1.2.1 | **Sofware Requirement Specification** |  | 14d | 2015-06-03 A | 2015-06-22 A |  | 100% |  | 136h | 136h |
| 60 | 1.2.1.1 | **Non-functional Requirements Specification** |  | 1d | 2015-06-22 A | 2015-06-22 A | 72 | 100% |  |  |  |
| 61 | 1.2.1.1.1 | Develop User Interface requirements |  | 1d | 2015-06-22 A | 2015-06-22 A |  | 100% |  |  |  |
| 62 | 1.2.1.1.2 | Develop Performance requirements |  | 1d | 2015-06-22 A | 2015-06-22 A |  | 100% |  |  |  |
| 63 | 1.2.1.2 | **Functional Requirement Specification** |  | 13d | 2015-06-03 A | 2015-06-19 A |  | 100% |  | 136h | 136h |
| 64 | 1.2.1.2.1 | **Part 1** |  | 5d | 2015-06-03 A | 2015-06-09 A |  | 100% |  | 72h | 72h |
| 65 | 1.2.1.2.1.1 | Homepage Module |  | 2d | 2015-06-03 A | 2015-06-04 A |  | 100% | DucHN | 16h | 16h |
| 66 | 1.2.1.2.1.2 | User personal page Module |  | 1d | 2015-06-03 A | 2015-06-03 A |  | 100% | HoangNM | 8h | 8h |
| 67 | 1.2.1.2.1.3 | Admin Module |  | 1d | 2015-06-04 A | 2015-06-04 A | 66 | 100% | HaiDT | 8h | 8h |
| 68 | 1.2.1.2.1.4 | Search Module |  | 1d | 2015-06-04 A | 2015-06-04 A | 66 | 100% | DucHN | 8h | 8h |
| 69 | 1.2.1.2.1.5 | Login/Logout Module |  | 1d | 2015-06-05 A | 2015-06-05 A | 68 | 100% | HoangNM | 8h | 8h |
| 70 | 1.2.1.2.1.6 | Friend Module |  | 2d | 2015-06-05 A | 2015-06-08 A | 68 | 100% | HaiDT | 16h | 16h |
| 71 | 1.2.1.2.1.7 | Room module |  | 1d | 2015-06-09 A | 2015-06-09 A | 70 | 100% | DucHN | 8h | 8h |
| 72 | 1.2.1.2.2 | **Part 2** |  | 6d | 2015-06-12 A | 2015-06-19 A | 64FS+2d | 100% |  | 64h | 64h |
| 73 | 1.2.1.2.2.1 | Suggestion Module |  | 1d | 2015-06-12 A | 2015-06-12 A |  | 100% | HoangNM | 8h | 8h |
| 74 | 1.2.1.2.2.2 | Sharing Module |  | 1d | 2015-06-12 A | 2015-06-12 A |  | 100% | HaiDT | 8h | 8h |
| 75 | 1.2.1.2.2.3 | Report Module |  | 1d | 2015-06-15 A | 2015-06-15 A | 74 | 100% | DucHN | 8h | 8h |
| 76 | 1.2.1.2.2.4 | Planing Module |  | 3d | 2015-06-15 A | 2015-06-17 A | 74 | 100% | HoangNM | 24h | 24h |
| 77 | 1.2.1.2.2.5 | Chat module |  | 2d | 2015-06-18 A | 2015-06-19 A | 76 | 100% | HaiDT | 16h | 16h |

| ID | WBS | Task | Type | Duration | Start | Finish | Predecessors | Complete | Resources | Work | Actual work |
| --- | --- | --- | --- | --- | --- | --- | --- | --- | --- | --- | --- |
| 78 | 1.2.2 | **System Architectural Design** |  | 5d | 2015-06-03 A | 2015-06-09 A |  | 100% |  | 32h | 32h |
| 79 | 1.2.2.1 | Define the system structure and unify system features |  | 2d | 2015-06-03 A | 2015-06-04 A |  | 100% | HaiDT | 16h | 16h |
| 80 | 1.2.2.2 | Study the common System Architetures |  | 1d | 2015-06-05 A | 2015-06-05 A | 79 | 100% | DucHN | 8h | 8h |
| 81 | 1.2.2.3 | Make choice of System Architeture |  | 1d | 2015-06-08 A | 2015-06-08 A | 80 | 100% | DevTeam | 8h | 8h |
| 82 | 1.2.2.4 | Complete Architecture Design version 1.0 | milestone | 0d | 2015-06-09 A | 2015-06-09 A | 81FS+1d | 100% |  |  |  |
| 83 | 1.2.3 | **Detailed Design** |  | 19d | 2015-06-11 A | 2015-07-07 A | 78 | 100% |  | 144h | 144h |
| 84 | 1.2.3.1 | **Database design** |  | 5d | 2015-06-22 A | 2015-06-26 A | 63 | 100% |  | 40h | 40h |
| 85 | 1.2.3.1.1 | Organize information to Database tables |  | 3d | 2015-06-22 A | 2015-06-24 A |  | 100% | HaiDT | 24h | 24h |
| 86 | 1.2.3.1.2 | Define object in Database |  | 1d | 2015-06-25 A | 2015-06-25 A | 85 | 100% | HaiDT | 8h | 8h |
| 87 | 1.2.3.1.3 | Define relationships in Database |  | 1d | 2015-06-26 A | 2015-06-26 A | 86 | 100% | DucHN | 8h | 8h |
| 88 | 1.2.3.2 | Refine Database Design |  | 1d | 2015-07-01 A | 2015-07-01 A | 84 | 100% | DevTeam | 8h | 8h |
| 89 | 1.2.3.3 | **Screen design** |  | 3d | 2015-06-11 A | 2015-06-15 A |  | 100% |  | 24h | 24h |
| 90 | 1.2.3.3.1 | Create Screen Flow diagram |  | 1d | 2015-06-11 A | 2015-06-11 A | 78FS+1d | 100% | HoangNM | 8h | 8h |
| 91 | 1.2.3.3.2 | Create Screen Definition |  | 1d | 2015-06-12 A | 2015-06-12 A | 90 | 100% | HoangNM | 8h | 8h |
| 92 | 1.2.3.3.3 | Create Screen Design |  | 1d | 2015-06-15 A | 2015-06-15 A | 91 | 100% | DevTeam | 8h | 8h |
| 93 | 1.2.3.4 | **Class/Component Design** |  | 5d | 2015-07-01 A | 2015-07-07 A | 89 | 100% |  | 72h | 72h |
| 94 | 1.2.3.4.1 | Create Data models |  | 1d | 2015-07-01 A | 2015-07-01 A | 84 | 100% | HaiDT | 8h | 8h |
| 95 | 1.2.3.4.2 | List components of the system |  | 1d | 2015-07-02 A | 2015-07-02 A | 94 | 100% | DucHN | 8h | 8h |
| 96 | 1.2.3.4.3 | Break modules into classes |  | 1d | 2015-07-03 A | 2015-07-03 A | 95 | 100% | DucHN | 8h | 8h |
| 97 | 1.2.3.4.4 | Create Class diagram |  | 2d | 2015-07-06 A | 2015-07-07 A | 96 | 100% | HieuTM | 16h | 16h |
| 98 | 1.2.3.4.5 | Create Class description document |  | 1d | 2015-07-06 A | 2015-07-06 A | 96 | 100% | HieuTM | 8h | 8h |
| 99 | 1.2.3.4.6 | Create Flow diagram |  | 1d | 2015-07-03 A | 2015-07-03 A | 95 | 100% | HieuTM | 8h | 8h |
| 100 | 1.2.3.4.7 | Create Progress Report 2 |  | 1d | 2015-07-06 A | 2015-07-06 A | 99 | 100% | DucHN | 8h | 8h |
| 101 | 1.2.3.4.8 | Create Design review checklists |  | 1d | 2015-07-07 A | 2015-07-07 A | 100 | 100% | ThuyLM | 8h | 8h |

| ID | WBS | Task | Type | Duration | Start | Finish | Predecessors | Complete | Resources | Work | Actual work |
| --- | --- | --- | --- | --- | --- | --- | --- | --- | --- | --- | --- |
| 102 | 1.2.4 | **Project Management** |  | 2d | 2015-06-10 A | 2015-06-11 A | 78 | 100% |  | 40h | 40h |
| 103 | 1.2.4.1 | Update project plan |  | 2d | 2015-06-10 A | 2015-06-11 A |  | 100% | DucHN | 16h | 16h |
| 104 | 1.2.4.2 | Coding Center Helper Page |  | 2d | 2015-06-10 A | 2015-06-11 A |  | 100% | HoangNM | 16h | 16h |
| 105 | 1.2.4.3 | Coding Login with Facebook and Google+ feature |  | 1d | 2015-06-10 A | 2015-06-10 A |  | 100% | HoangNM | 8h | 8h |
| 106 | 1.2.5 | **Test** |  | 7d | 2015-06-03 A | 2015-06-11 A |  | 100% |  | 56h | 56h |
| 107 | 1.2.5.1 | Create Test plan |  | 3d | 2015-06-03 A | 2015-06-05 A |  | 100% | ThuyLM | 24h | 24h |
| 108 | 1.2.5.2 | Review + Update Test plan |  | 1d | 2015-06-08 A | 2015-06-08 A | 107 | 100% | LucPT | 8h | 8h |
| 109 | 1.2.5.3 | Test plan approved | milestone | 0d | 2015-06-08 A | 2015-06-08 A | 108 | 100% |  |  |  |
| 110 | 1.2.5.4 | Start writing Test cases |  | 3d | 2015-06-09 A | 2015-06-11 A | 109 | 100% | DocTeam | 24h | 24h |
| 111 | 1.3 | **Construction** |  | 29d | 2015-07-07 A | 2015-08-17 A | 58 | 100% |  | 756h | 756h |
| 112 | 1.3.1 | **Design** |  | 3d | 2015-07-08 A | 2015-07-10 A |  | 100% |  | 24h | 24h |
| 113 | 1.3.1.1 | Refine Design document |  | 3d | 2015-07-08 A | 2015-07-10 A |  | 100% | HaiDT | 24h | 24h |
| 114 | 1.3.2 | **Coding** |  | 21d | 2015-07-16 A | 2015-08-13 A | 112FS+3d | 100% |  | 268h | 268h |
| 115 | 1.3.2.1 | Build prototype |  | 2d | 2015-07-16 A | 2015-07-17 A |  | 100% | DevTeam | 16h | 16h |
| 116 | 1.3.2.2 | Prototype approved | milestone | 0d | 2015-07-17 A | 2015-07-17 A | 115 | 100% |  |  |  |
| 117 | 1.3.2.3 | **Coding product (Continue)** |  | 17d | 2015-07-20 A | 2015-08-11 A | 116 | 100% |  | 252h | 252h |
| 118 | 1.3.2.3.1 | Develop UI |  | 1w | 2015-07-20 A | 2015-07-24 A |  | 100% | DucHN | 40h | 40h |
| 119 | 1.3.2.3.2 | Develop objects |  | 2d | 2015-07-20 A | 2015-07-21 A | 118SS | 100% | HaiDT | 16h | 16h |
| 120 | 1.3.2.3.3 | Create system documentation |  | 1d | 2015-07-20 A | 2015-07-20 A | 119SS | 100% | HoangNM | 8h | 8h |
| 121 | 1.3.2.3.4 | **Coding Modules** |  | 14d | 2015-07-23 A | 2015-08-11 A | 119FS+1d | 100% |  | 188h | 188h |
| 122 | 1.3.2.3.4.1 | **Part 1** |  | 9d | 2015-07-23 A | 2015-08-04 A |  | 100% |  | 124h | 124h |
| 123 | 1.3.2.3.4.1.1 | Homepage Module |  | 3d | 2015-07-23 A | 2015-07-27 A |  | 100% | DucHN | 24h | 24h |
| 124 | 1.3.2.3.4.1.2 | User personal page Module |  | 2d | 2015-07-23 A | 2015-07-24 A | 123SS | 100% | HaiDT | 16h | 16h |
| 125 | 1.3.2.3.4.1.3 | Admin Module |  | 2d | 2015-07-23 A | 2015-07-24 A | 123SS | 100% | HoangNM | 16h | 16h |
| 126 | 1.3.2.3.4.1.4 | Search Module |  | 3d | 2015-07-28 A | 2015-07-30 A | 123 | 100% | DucHN | 24h | 24h |
| 127 | 1.3.2.3.4.1.5 | Login/Logout Module |  | 0.5d | 2015-07-27 A | 2015-07-27 A | 124 | 100% | HaiDT | 4h | 4h |
| 128 | 1.3.2.3.4.1.6 | Friend Module |  | 2d | 2015-07-27 A | 2015-07-28 A | 125 | 100% | HoangNM | 16h | 16h |
| 129 | 1.3.2.3.4.1.7 | Room module |  | 3d | 2015-07-31 A | 2015-08-04 A | 126 | 100% | DucHN | 24h | 24h |

| ID | WBS | Task | Type | Duration | Start | Finish | Predecessors | Complete | Resources | Work | Actual work |
| --- | --- | --- | --- | --- | --- | --- | --- | --- | --- | --- | --- |
| 130 | 1.3.2.3.4.2 | **Part 2** |  | 4d | 2015-08-06 A | 2015-08-11 A | 122FS+1d | 100% |  | 64h | 64h |
| 131 | 1.3.2.3.4.2.1 | Suggestion Module |  | 2d | 2015-08-06 A | 2015-08-07 A | 127 | 100% | HaiDT | 16h | 16h |
| 132 | 1.3.2.3.4.2.2 | Sharing Module |  | 0.5d | 2015-08-06 A | 2015-08-06 A | 128 | 100% | HoangNM | 4h | 4h |
| 133 | 1.3.2.3.4.2.3 | Report Module |  | 0.5d | 2015-08-06 A | 2015-08-06 A | 129 | 100% | DucHN | 4h | 4h |
| 134 | 1.3.2.3.4.2.4 | Chat module |  | 2d | 2015-08-10 A | 2015-08-11 A | 131 | 100% | HaiDT | 16h | 16h |
| 135 | 1.3.2.3.4.2.5 | Planning Module |  | 3d | 2015-08-06 A | 2015-08-11 A | 132 | 100% | HoangNM | 24h | 24h |
| 136 | 1.3.2.4 | Product development completes | milestone | 0d | 2015-08-13 A | 2015-08-13 A | 121FS+2d | 100% |  |  |  |
| 137 | 1.3.3 | **Testing** |  | 29d | 2015-07-07 A | 2015-08-17 A | 106 | 100% |  | 280h | 280h |
| 138 | 1.3.3.1 | **Writing Test cases (Continue)** |  | 12d | 2015-07-08 A | 2015-07-23 A |  | 100% |  | 80h | 80h |
| 139 | 1.3.3.1.1 | Create Integration Test Case |  | 3d | 2015-07-08 A | 2015-07-10 A |  | 100% | ThuyLM | 24h | 24h |
| 140 | 1.3.3.1.2 | Update and review Integration Test Case |  | 2d | 2015-07-15 A | 2015-07-16 A | 139FS+2d | 100% | HieuTM | 16h | 16h |
| 141 | 1.3.3.1.3 | Create System Test Case |  | 3d | 2015-07-17 A | 2015-07-21 A | 140 | 100% | DocTeam | 24h | 24h |
| 142 | 1.3.3.1.4 | Update and review System Test Case |  | 2d | 2015-07-22 A | 2015-07-23 A | 141 | 100% | DocTeam | 16h | 16h |
| 143 | 1.3.3.2 | Writing Test cases completes | milestone | 0d | 2015-07-07 A | 2015-07-07 A |  | 100% |  |  |  |
| 144 | 1.3.3.3 | **Execute Test** |  | 17d | 2015-07-24 A | 2015-08-17 A | 138 | 100% |  | 200h | 200h |
| 145 | 1.3.3.3.1 | **Execute Test Part 1** |  | 8d | 2015-07-24 A | 2015-08-04 A |  | 100% |  | 96h | 96h |
| 146 | 1.3.3.3.1.1 | Execute Component Test |  | 2d | 2015-07-24 A | 2015-07-27 A |  | 100% | DocTeam | 16h | 16h |
| 147 | 1.3.3.3.1.2 | Fix bug Component Test |  | 2d | 2015-07-28 A | 2015-07-29 A | 146 | 100% | DocTeam | 16h | 16h |
| 148 | 1.3.3.3.1.3 | Execute Integration Test |  | 2d | 2015-07-28 A | 2015-07-29 A | 146 | 100% | DocTeam | 16h | 16h |
| 149 | 1.3.3.3.1.4 | Fix bug Integration Test |  | 2d | 2015-07-30 A | 2015-07-31 A | 148 | 100% | DocTeam | 16h | 16h |
| 150 | 1.3.3.3.1.5 | Execute System Test |  | 2d | 2015-07-30 A | 2015-07-31 A | 148 | 100% | DocTeam | 16h | 16h |
| 151 | 1.3.3.3.1.6 | Fix bug System Test |  | 2d | 2015-08-03 A | 2015-08-04 A | 150 | 100% | DocTeam | 16h | 16h |
| 152 | 1.3.3.3.2 | **Execute Test Part 2** |  | 8d | 2015-08-05 A | 2015-08-14 A | 145 | 100% |  | 96h | 96h |
| 153 | 1.3.3.3.2.1 | Execute Component Test |  | 2d | 2015-08-05 A | 2015-08-06 A |  | 100% | DocTeam | 16h | 16h |
| 154 | 1.3.3.3.2.2 | Fix bug Component Test |  | 2d | 2015-08-07 A | 2015-08-10 A | 153 | 100% | DocTeam | 16h | 16h |
| 155 | 1.3.3.3.2.3 | Execute Integration Test |  | 2d | 2015-08-07 A | 2015-08-10 A | 153 | 100% | DocTeam | 16h | 16h |
| 156 | 1.3.3.3.2.4 | Fix bug Integration Test |  | 2d | 2015-08-11 A | 2015-08-12 A | 155 | 100% | DocTeam | 16h | 16h |
| 157 | 1.3.3.3.2.5 | Execute System Test |  | 2d | 2015-08-11 A | 2015-08-12 A | 155 | 100% | DocTeam | 16h | 16h |
| 158 | 1.3.3.3.2.6 | Fix bug System Test |  | 2d | 2015-08-13 A | 2015-08-14 A | 157 | 100% | DocTeam | 16h | 16h |
| 159 | 1.3.3.3.3 | Create Test Report first verstion |  | 1d | 2015-08-17 A | 2015-08-17 A | 158 | 100% | DocTeam | 8h | 8h |
| 160 | 1.3.3.3.4 | Complete Testing | milestone | 0d | 2015-08-17 A | 2015-08-17 A | 159 | 100% |  |  |  |

| ID | WBS | Task | Duration | Start | Finish | Predecessors | Complete | Resources | Work | Actual work |
| --- | --- | --- | --- | --- | --- | --- | --- | --- | --- | --- |
| 161 | 1.3.4 | **User Manual** | 2d | 2015-08-14 A | 2015-08-17 A | 114 | 100% |  | 24h | 24h |
| 162 | 1.3.4.1 | Create Installation guideline | 1d | 2015-08-14 A | 2015-08-14 A |  | 100% | DucHN | 8h | 8h |
| 163 | 1.3.4.2 | Create User guideline | 1d | 2015-08-14 A | 2015-08-14 A | 162SS | 100% | HaiDT | 8h | 8h |
| 164 | 1.3.4.3 | Review + Update guidelines | 1d | 2015-08-17 A | 2015-08-17 A | 163 | 100% | DucHN | 8h | 8h |
| 165 | 1.3.5 | **Manage development** | 5d | 2015-07-16 A | 2015-07-22 A | 114SS | 100% |  | 160h | 160h |
| 166 | 1.3.5.1 | **Manage scope/cost/time** | 5d | 2015-07-16 A | 2015-07-22 A |  | 100% |  | 80h | 80h |
| 167 | 1.3.5.1.1 | Monitor product changes | 1w | 2015-07-16 A | 2015-07-22 A |  | 100% | DucHN | 40h | 40h |
| 168 | 1.3.5.1.2 | Monitor project changes | 1w | 2015-07-16 A | 2015-07-22 A |  | 100% | DucHN | 40h | 40h |
| 169 | 1.3.5.2 | **Manage communications** | 1d | 2015-07-16 A | 2015-07-16 A |  | 100% |  | 40h | 40h |
| 170 | 1.3.5.2.1 | **Implement communications methods and strategies** | 1d | 2015-07-16 A | 2015-07-16 A |  | 100% |  | 8h | 8h |
| 171 | 1.3.5.2.1.1 | Select tools | 1d | 2015-07-16 A | 2015-07-16 A |  | 100% | DucHN | 8h | 8h |
| 172 | 1.3.5.2.2 | **Distribute information** | 1d | 2015-07-16 A | 2015-07-16 A |  | 100% |  | 24h | 24h |
| 173 | 1.3.5.2.2.1 | Attend team meeting | 1d | 2015-07-16 A | 2015-07-16 A |  | 100% | TEAM | 8h | 8h |
| 174 | 1.3.5.2.2.2 | Create status reports | 1d | 2015-07-16 A | 2015-07-16 A |  | 100% | HoangNM | 8h | 8h |
| 175 | 1.3.5.2.2.3 | Create Weekly Report | 1d | 2015-07-16 A | 2015-07-16 A |  | 100% | DucHN | 8h | 8h |
| 176 | 1.3.5.2.3 | Resolve communications problems | 1d | 2015-07-16 A | 2015-07-16 A |  | 100% | DucHN | 8h | 8h |
| 177 | 1.3.5.3 | **Manage quality control** | 1d | 2015-07-16 A | 2015-07-16 A |  | 100% |  | 16h | 16h |
| 178 | 1.3.5.3.1 | Monitor product quality | 1d | 2015-07-16 A | 2015-07-16 A |  | 100% | DucHN | 8h | 8h |
| 179 | 1.3.5.3.2 | **Monitor project quality** | 1d | 2015-07-16 A | 2015-07-16 A |  | 100% |  | 8h | 8h |
| 180 | 1.3.5.3.2.1 | Implement process improvements | 1d | 2015-07-16 A | 2015-07-16 A |  | 100% | DucHN | 8h | 8h |
| 181 | 1.3.5.4 | **Manage risk** | 1d | 2015-07-16 A | 2015-07-16 A |  | 100% |  | 16h | 16h |
| 182 | 1.3.5.4.1 | Monitor risks | 1d | 2015-07-16 A | 2015-07-16 A |  | 100% | DucHN | 8h | 8h |
| 183 | 1.3.5.4.2 | Specify responses | 1d | 2015-07-16 A | 2015-07-16 A |  | 100% | DucHN | 8h | 8h |
| 184 | 1.3.5.5 | Manage integration | 1d | 2015-07-16 A | 2015-07-16 A |  | 100% | DucHN | 8h | 8h |

| ID | WBS | Task | Duration | Start | Finish | Predecessors | Complete | Constraint | Resources | Work | Actual work |
| --- | --- | --- | --- | --- | --- | --- | --- | --- | --- | --- | --- |
| 185 | 1.4 | **Termination** | 7d | 2015-08-18 A | 2015-08-26 A | 111 | 100% |  |  | 48h | 48h |
| 186 | 1.4.1 | **Pre-Closing** | 2d | 2015-08-18 A | 2015-08-19 A |  | 100% |  |  | 16h | 16h |
| 187 | 1.4.1.1 | Training presentation | 2d | 2015-08-18 A | 2015-08-19 A |  | 100% |  | TEAM | 16h | 16h |
| 188 | 1.4.2 | **Closing** | 4d | 2015-08-21 A | 2015-08-26 A | 186FS+1d | 100% |  |  | 32h | 32h |
| 189 | 1.4.2.1 | Prepare for presentation | 3d | 2015-08-21 A | 2015-08-25 A |  | 100% |  | TEAM | 24h | 24h |
| 190 | 1.4.2.2 | Represent Capstone Project and Completed | 1d | 2015-08-26 A | 2015-08-26 A | 189 | 100% | finish no earlier than 2015-08-26 | TEAM | 8h | 8h |
